# Lehong 2019

Schedule from MS Project, 2018-03-01 to 2019-03-01.

## Calendars

- Standard: Mon-Fri 09:00-17:00; Sat-Sun off.

## Resources

| Resource |
| --- |
| Sylvia More |
| Emilia Mohapi |
| Julie Smith |
| Kabelo Mohapi |
| Neo Mohapi |
| Andy Johns |
| Jackie Whiley |
| Blantina Morake |
| Project Support Officer |
| Safety Analyst |
| Risk Analyst |
| Randy Schepers |
| Miles Mchunu |
| Daniel Lee |
| Justine Leakey |
| Derek Rivett |
| Manzi Nisela |
| Amos Mokoena |
| Elias Makoti |
| Ollie Volta |
| Local Inspection Authority |

## Schedule

| ID | WBS | Task | Duration | Start | Finish | Total slack | Constraint | Resources | Work |
| --- | --- | --- | --- | --- | --- | --- | --- | --- | --- |
| 1 | 1 | **Lehong 2019** | 262d | 2018-03-01 | 2019-03-01 | 0d | start no earlier than 2018-03-01 |  | 7496h |
| 2 | 1.1 | **Planning** | 91d | 2018-03-01 | 2018-07-05 | 0d |  |  | 1968h |
| 3 | 1.1.1 | Deciding on Project Concept | 7d | 2018-03-01 | 2018-03-09 | 0d | must start on 2018-03-01 | Sylvia More; Emilia Mohapi; Julie Smith; Kabelo Mohapi; Neo Mohapi; Andy Johns; Jackie Whiley | 392h |
| 4 | 1.1.2 | Concept Review | 2d | 2018-03-02 | 2018-03-05 | 259d | start no earlier than 2018-03-02 | Andy Johns | 16h |
| 5 | 1.1.3 | Determining Budget | 14d | 2018-03-02 | 2018-03-21 | 0d | must start on 2018-03-02 | Sylvia More; Jackie Whiley | 224h |
| 6 | 1.1.4 | **Engage Contractors** | 85d | 2018-03-09 | 2018-07-05 | 0d | start no earlier than 2018-03-09 |  | 1336h |
| 7 | 1.1.4.1 | Quantify space requirements | 7d | 2018-03-09 | 2018-03-19 | 0d | must start on 2018-03-09 | Andy Johns | 56h |
| 8 | 1.1.4.2 | Contractor Negotiations | 80d | 2018-03-16 | 2018-07-05 | 0d | must start on 2018-03-16 | Sylvia More; Blantina Morake | 1280h |
| 9 | 1.2 | **Project Management** | 39d | 2018-05-04 | 2018-06-27 | 177d |  |  | 320h |
| 10 | 1.2.1 | Communication Strategy | 1d | 2018-05-04 | 2018-05-04 | 215d | start no earlier than 2018-05-04 | Emilia Mohapi | 8h |
| 11 | 1.2.2 | Support Services | 39d | 2018-05-04 | 2018-06-27 | 177d | start no earlier than 2018-05-04 | Project Support Officer | 312h |
| 12 | 1.3 | **Safety and Environment** | 153d | 2018-07-27 | 2019-02-26 | 3d |  |  | 2448h |
| 13 | 1.3.1 | Safety Analysis Report | 153d | 2018-07-27 | 2019-02-26 | 3d | start no earlier than 2018-07-27 | Safety Analyst | 1224h |
| 14 | 1.3.2 | Probabilistic Risk Assessment | 153d | 2018-07-27 | 2019-02-26 | 3d | start no earlier than 2018-07-27 | Risk Analyst | 1224h |
| 15 | 1.4 | **Design** | 40d | 2018-05-04 | 2018-06-28 | 0d |  |  | 960h |
| 16 | 1.4.1 | Industrial Design | 40d | 2018-05-04 | 2018-06-28 | 0d | must start on 2018-05-04 | Randy Schepers | 320h |
| 17 | 1.4.2 | **Mechanical Design** | 40d | 2018-05-04 | 2018-06-28 | 0d |  |  | 640h |
| 18 | 1.4.2.1 | Production line control software program | 40d | 2018-05-04 | 2018-06-28 | 0d | must start on 2018-05-04 | Andy Johns | 320h |
| 19 | 1.4.2.2 | Production train design | 40d | 2018-05-04 | 2018-06-28 | 0d | must start on 2018-05-04 | Miles Mchunu | 320h |
| 20 | 1.5 | **Preconstruction** | 100d | 2018-03-01 | 2018-07-18 | 162d |  |  | 488h |
| 21 | 1.5.1 | Waste Acceptance Criteria | 15d | 2018-06-08 | 2018-06-28 | 176d | start no earlier than 2018-06-08 | Project Support Officer | 120h |
| 22 | 1.5.2 | Quality Assurance | 10d | 2018-06-18 | 2018-06-29 | 175d | start no earlier than 2018-06-17 | Andy Johns | 80h |
| 23 | 1.5.3 | Subcontractor Training | 28d | 2018-06-11 | 2018-07-18 | 162d | start no earlier than 2018-06-11 | Blantina Morake | 224h |
| 24 | 1.5.4 | Readiness Review | 8d | 2018-07-09 | 2018-07-18 | 162d | start no earlier than 2018-07-08 | Andy Johns | 64h |
| 25 | 1.5.5 | Site-clearing permission | 1d | 2018-03-01 | 2018-03-01 | 261d |  |  |  |

| ID | WBS | Task | Duration | Start | Finish | Total slack | Constraint | Resources | Work |
| --- | --- | --- | --- | --- | --- | --- | --- | --- | --- |
| 26 | 1.6 | **Construction** | 20d | 2018-06-29 | 2018-07-26 | 0d | start no earlier than 2018-06-29 |  | 192h |
| 27 | 1.6.1 | Site-clearing | 20d | 2018-06-29 | 2018-07-26 | 0d | must start on 2018-06-29 | Daniel Lee | 160h |
| 28 | 1.6.2 | **Building of Facility** | 1d | 2018-06-29 | 2018-06-29 | 175d |  | Daniel Lee; Justine Leakey; Derek Rivett; Manzi Nisela | 32h |
| 29 | 1.6.2.1 | Foundation | 1d | 2018-06-29 | 2018-06-29 | 175d |  |  |  |
| 30 | 1.6.2.2 | Structures | 1d | 2018-06-29 | 2018-06-29 | 175d |  |  |  |
| 31 | 1.6.2.3 | Roofing | 1d | 2018-06-29 | 2018-06-29 | 175d |  |  |  |
| 32 | 1.6.2.4 | Water Proofing | 1d | 2018-06-29 | 2018-06-29 | 175d |  |  |  |
| 33 | 1.6.2.5 | Building Electrification | 1d | 2018-06-29 | 2018-06-29 | 175d |  |  |  |
| 34 | 1.7 | **Installation** | 59d | 2018-11-02 | 2019-01-23 | 0d |  |  | 944h |
| 35 | 1.7.1 | Install semi-automatic woodworking production train | 40d | 2018-11-02 | 2018-12-27 | 0d | must start on 2018-11-02 | Amos Mokoena; Elias Makoti | 640h |
| 36 | 1.7.2 | Paint shop installation | 15d | 2018-11-30 | 2018-12-20 | 51d | start no earlier than 2018-11-30 | Amos Mokoena | 120h |
| 37 | 1.7.3 | Hardware Installation | 10d | 2018-12-21 | 2019-01-03 | 0d | must start on 2018-12-21 | Ollie Volta | 80h |
| 38 | 1.7.4 | Software Installation | 5d | 2019-01-04 | 2019-01-10 | 0d | must start on 2019-01-04 | Andy Johns | 40h |
| 39 | 1.7.5 | Install compressor | 4d | 2019-01-11 | 2019-01-16 | 0d | must start on 2019-01-11 | Ollie Volta | 32h |
| 40 | 1.7.6 | Install Air-conditioning | 4d | 2019-01-18 | 2019-01-23 | 0d | must start on 2019-01-18 | Ollie Volta | 32h |
| 41 | 1.8 | **Final Inspection** | 17d | 2019-02-04 | 2019-02-26 | 3d |  |  | 136h |
| 42 | 1.8.1 | Complete production train inspection | 5d | 2019-02-04 | 2019-02-08 | 15d | start no earlier than 2019-02-04 | Andy Johns | 40h |
| 43 | 1.8.2 | Paint shop inspection | 5d | 2019-02-11 | 2019-02-15 | 10d | start no earlier than 2019-02-11 | Andy Johns | 40h |
| 44 | 1.8.3 | Building Inspection | 4d | 2019-02-18 | 2019-02-21 | 6d | start no earlier than 2019-02-16 | Andy Johns | 32h |
| 45 | 1.8.4 | Final approval | 3d | 2019-02-22 | 2019-02-26 | 3d | start no earlier than 2019-02-22 | Local Inspection Authority | 24h |
| 46 | 1.9 | **Commissioning** | 5d | 2019-02-25 | 2019-03-01 | 0d |  |  | 40h |
| 47 | 1.9.1 | Production start-up | 5d | 2019-02-25 | 2019-03-01 | 0d | finish no earlier than 2019-03-01 | Andy Johns | 40h |
